# Planeaciónn

How a schedule from MS Project changed from version to version. A marks actual dates.

## Version 1 (saved 2016-05-28)

Note of the change: documentacion v0.1

| ID | WBS | Task | Duration | Start | Finish | Predecessors | Total float |
| --- | --- | --- | --- | --- | --- | --- | --- |
| 1 | 1 | **Plan preeliminar** | 1.88d | 2016-05-02 09:00 | 2016-05-03 18:00 |  |  |
| 2 |  | Generar WBS del producto inicial | 4h | 2016-05-02 09:00 | 2016-05-02 13:00 |  | 0d |
| 3 |  | Generar project charter | 1h | 2016-05-02 15:00 | 2016-05-02 16:00 | 2 | 0d |
| 4 |  | Plan preeliminar del proyecto | 8h | 2016-05-02 16:00 | 2016-05-03 16:00 | 3 | 0d |
| 5 |  | Matriz de comunicación | 1h | 2016-05-03 16:00 | 2016-05-03 17:00 | 4 | 0d |
| 6 |  | Minuta de inicio | 1h | 2016-05-03 17:00 | 2016-05-03 18:00 | 5 | 0d |
| 7 |  | El WBS contiene todas las tareas a realizar para integrar el proyecto, el project charter contiene participantes(roles), presupuesto,alcance, duración , la matriz de comunicaciones contiene los responsables de elaborar los entregables y su distribución | 0d | 2016-05-02 09:00 | 2016-05-02 09:00 |  | 1.88d |
| 8 | 2 | **Site Cultura Deporte 01** | 79.12d | 2016-05-03 18:00 | 2016-08-12 09:00 | 1 | 0d |
| 9 |  | Formación del equipo | 8h | 2016-05-03 18:00 | 2016-05-04 18:00 | 6 | 56.94d |
| 10 |  | El equipo estara conformado con las personas que cumplan con el perfil requerido | 0d | 2016-05-03 18:00 | 2016-05-03 18:00 |  | 79.12d |
| 11 | 2.3 | **Construcción** | 79.12d | 2016-05-03 18:00 | 2016-08-12 09:00 | 2 | 0d |
| 12 | 2.3.1 | **Analisis** | 5.25d | 2016-05-04 18:00 | 2016-05-11 16:00 | 2 | 57.69d |
| 13 | 2.3.1.1 | **Elicitación** | 3.12d | 2016-05-04 18:00 | 2016-05-09 13:00 | 2 | 57.69d |
| 14 |  | Generar lista de proveedores | 2h | 2016-05-04 18:00 | 2016-05-05 10:00 | 9 | 56.94d |
| 15 |  | Evaluar proveedores de requerimientos | 1h | 2016-05-05 10:00 | 2016-05-05 11:00 | 14 | 56.94d |
| 16 |  | Definir estrategia de recolección de datos | 0.5h | 2016-05-05 11:00 | 2016-05-05 11:30 | 15 | 56.94d |
| 17 |  | Planificación de reuniones de licitación | 1.5h | 2016-05-05 11:30 | 2016-05-05 13:00 | 16 | 56.94d |
| 18 |  | Identificar procesos del sistema | 8h | 2016-05-05 15:00 | 2016-05-06 13:00 | 17 | 56.94d |
| 19 |  | identificar requerimientos funcionales | 8h | 2016-05-06 15:00 | 2016-05-07 13:00 | 18 | 56.94d |
| 20 |  | Identificar requerimientos no funcionales | 4h | 2016-05-09 09:00 | 2016-05-09 13:00 | 19 | 56.94d |
| 21 | 2.3.1.2 | **Especificación** | 1d | 2016-05-09 15:00 | 2016-05-10 13:00 |  | 57.69d |
| 22 |  | Evaluación de requerimientos | 2h | 2016-05-09 15:00 | 2016-05-09 17:00 | 20 | 56.94d |
| 23 |  | SRS | 6h | 2016-05-09 17:00 | 2016-05-10 13:00 | 22 | 56.94d |
| 24 | 2.3.1.3 | **Gestion de requerimientos** | 1.12d | 2016-05-10 15:00 | 2016-05-11 16:00 |  | 57.69d |
| 25 |  | priorizar requerimientos | 2h | 2016-05-10 15:00 | 2016-05-10 17:00 | 21 | 56.94d |
| 26 |  | Almacenar en repositorio | 0.5h | 2016-05-10 17:00 | 2016-05-10 17:30 | 25 | 56.94d |
| 27 |  | Asignar a desarrolladores de software | 1h | 2016-05-10 17:30 | 2016-05-10 18:30 | 26 | 56.94d |
| 28 |  | Administración de cambios de requerimientos | 0.5h | 2016-05-10 18:30 | 2016-05-10 19:00 | 27 | 56.94d |
| 29 |  | Administración de la trazabilidad de requerimientos | 5h | 2016-05-11 09:00 | 2016-05-11 16:00 | 28 | 56.94d |
| 30 |  | Entregar requerimientos funcionales y no funcionales, proveedores, asignacion de requerimientos | 0d | 2016-05-11 16:00 | 2016-05-11 16:00 | 29 | 72.88d |
| 31 | 2.3.3 | **Planificación** | 3.12d | 2016-05-11 16:00 | 2016-05-16 11:00 |  | 57.69d |
| 32 |  | Definición del ciclo de vida | 0.5h | 2016-05-11 16:00 | 2016-05-11 16:30 | 29 | 56.94d |
| 33 |  | Definición de politicas | 0.5h | 2016-05-11 16:30 | 2016-05-11 17:00 | 32 | 56.94d |
| 34 |  | Actualizar plan de proyecto | 2h | 2016-05-11 17:00 | 2016-05-11 19:00 | 33 | 56.94d |
| 35 |  | Actualizar matriz de comunicación | 1h | 2016-05-12 09:00 | 2016-05-12 10:00 | 34 | 56.94d |
| 36 | 2.3.3.5 | **Estimación** | 0.75d | 2016-05-12 10:00 | 2016-05-12 18:00 |  | 57.69d |
| 37 |  | Actualizar WBS/Calendario | 1h | 2016-05-12 10:00 | 2016-05-12 11:00 | 35 | 56.94d |
| 38 |  | Diccionario del WBS | 4h | 2016-05-12 11:00 | 2016-05-12 17:00 | 37 | 56.94d |
| 39 |  | Costos | 1h | 2016-05-12 17:00 | 2016-05-12 18:00 | 38 | 56.94d |
| 40 | 2.3.3.6 | **Riesgos** | 1.5d | 2016-05-12 18:00 | 2016-05-14 12:00 |  | 57.69d |
| 41 |  | Identificación de riesgos | 6h | 2016-05-12 18:00 | 2016-05-13 16:00 | 39 | 56.94d |
| 42 |  | asignación de prioridades | 2h | 2016-05-13 16:00 | 2016-05-13 18:00 | 41 | 56.94d |
| 43 |  | Plan de mitigación y contingencia | 4h | 2016-05-13 18:00 | 2016-05-14 12:00 | 42 | 56.94d |
| 44 | 2.3.3.7 | **Aseguramiento de la calidad** | 0.38d | 2016-05-14 12:00 | 2016-05-16 11:00 |  | 57.69d |
| 45 |  | Plan de gestión de la configuración | 2h | 2016-05-14 12:00 | 2016-05-16 10:00 | 43 | 57.69d |
| 46 |  | Junta de arranque de construcción | 1h | 2016-05-16 10:00 | 2016-05-16 11:00 | 45 | 56.94d |
| 47 |  | tener el ciclo de vida a seguir, actualizar el plan del proyecto así como matriz de comunicaciónes, sacar costos, definicion de riesgos con su plan de mitigación | 0d | 2016-05-16 11:00 | 2016-05-16 11:00 | 46 | 69.75d |
| 48 | 2.3.4 | **Diseño** | 2.62d | 2016-05-16 11:00 | 2016-05-18 18:00 |  | 57.69d |
| 49 |  | Definir la arquitectura | 2h | 2016-05-16 11:00 | 2016-05-16 13:00 | 46 | 56.94d |
| 50 |  | Realizar casos de uso | 4h | 2016-05-16 15:00 | 2016-05-16 19:00 | 49 | 56.94d |
| 51 |  | Realizar diagramas de secuencia | 2h | 2016-05-17 09:00 | 2016-05-17 11:00 | 50 | 56.94d |
| 52 |  | Realizar diagramas de clases | 1h | 2016-05-17 11:00 | 2016-05-17 12:00 | 51 | 56.94d |
| 53 |  | Realizar diagrama de componentes | 1h | 2016-05-17 12:00 | 2016-05-17 13:00 | 52 | 56.94d |
| 54 |  | Realizar diagrama de despliegue | 2h | 2016-05-17 15:00 | 2016-05-17 17:00 | 53 | 56.94d |
| 55 |  | Realizar el mapa de navegación | 1h | 2016-05-17 17:00 | 2016-05-17 18:00 | 54 | 56.94d |
| 56 |  | Realizar maquetado (bocetos) | 6h | 2016-05-17 18:00 | 2016-05-18 16:00 | 55 | 56.94d |
| 57 | 2.3.4.9 | **Diseño de diagramas de la base de datos** | 0.25d | 2016-05-18 16:00 | 2016-05-18 18:00 |  | 57.69d |
| 58 |  | Realizar el diagrama E-R | 1h | 2016-05-18 16:00 | 2016-05-18 17:00 | 56 | 56.94d |
| 59 |  | Realizar el diagrama Relacional | 1h | 2016-05-18 17:00 | 2016-05-18 18:00 | 58 | 56.94d |
| 60 |  | tener la arquitectura a seguir, obtención de diagramas de clases, secuencia, de casos de uso, navegacion, bocetos,E-R Y R | 0d | 2016-05-18 18:00 | 2016-05-18 18:00 | 59 | 67.12d |
| 61 | 2.3.6 | **Codificación** | 7.81d | 2016-05-18 18:00 | 2016-05-28 10:30 |  | 6.06d |
| 62 |  | Codificación de la base de datos | 3h | 2016-05-18 18:00 | 2016-05-19 11:00 | 59 | 56.94d |
| 63 | 2.3.6.2 | **Modulo Usuarios** | 1.06d | 2016-05-19 11:00 | 2016-05-20 11:30 |  | 57.69d |
| 64 |  | Codificar interfaz | 1h | 2016-05-19 11:00 | 2016-05-19 12:00 | 62 | 56.94d |
| 65 |  | Clases de usuario | 2h | 2016-05-19 12:00 | 2016-05-19 16:00 | 64 | 56.94d |
| 66 |  | Realizar conexión a la base de datos | 0.5h | 2016-05-19 16:00 | 2016-05-19 16:30 | 65 | 56.94d |
| 67 |  | Alta de usuario | 0.5h | 2016-05-19 16:30 | 2016-05-19 17:00 | 66 | 56.94d |
| 68 |  | Baja de usuario | 0.5h | 2016-05-19 17:00 | 2016-05-19 17:30 | 67 | 56.94d |
| 69 |  | Actualización de usuario | 1h | 2016-05-19 17:30 | 2016-05-19 18:30 | 68 | 56.94d |
| 70 |  | Consultas de usuario | 1h | 2016-05-19 18:30 | 2016-05-20 09:30 | 69 | 56.94d |

| ID | WBS | Task | Duration | Start | Finish | Predecessors | Total float |
| --- | --- | --- | --- | --- | --- | --- | --- |
| 71 |  | Reportes de usuario | 2h | 2016-05-20 09:30 | 2016-05-20 11:30 | 70 | 56.94d |
| 72 | 2.3.6.3 | **FRONTEND** | 1.06d | 2016-05-20 11:30 | 2016-05-21 12:00 |  | 57.69d |
| 73 | 2.3.6.3.1 | **Modulo inicio** | 0.25d | 2016-05-20 11:30 | 2016-05-20 15:30 |  | 57.69d |
| 74 |  | Codificar interfaz | 1h | 2016-05-20 11:30 | 2016-05-20 12:30 | 71 | 56.94d |
| 75 |  | Clases de inicio | 1h | 2016-05-20 12:30 | 2016-05-20 15:30 | 74 | 56.94d |
| 76 | 2.3.6.3.2 | **Modulo login** | 0.31d | 2016-05-20 15:30 | 2016-05-20 18:00 |  | 57.69d |
| 77 |  | Codificar interfaz | 1h | 2016-05-20 15:30 | 2016-05-20 16:30 | 75 | 56.94d |
| 78 |  | Clases de login | 1h | 2016-05-20 16:30 | 2016-05-20 17:30 | 77 | 56.94d |
| 79 |  | Realizar conexión a la base de datos | 0.5h | 2016-05-20 17:30 | 2016-05-20 18:00 | 78 | 56.94d |
| 80 | 2.3.6.3.3 | **Modulo historia** | 0.12d | 2016-05-20 18:00 | 2016-05-20 19:00 |  | 57.69d |
| 81 |  | Codificar interfaz | 1h | 2016-05-20 18:00 | 2016-05-20 19:00 | 79 | 56.94d |
| 82 | 2.3.6.3.4 | **Modulo Talleres** | 0.12d | 2016-05-21 09:00 | 2016-05-21 10:00 |  | 57.69d |
| 83 |  | Codificar interfaz | 1h | 2016-05-21 09:00 | 2016-05-21 10:00 | 81 | 56.94d |
| 84 | 2.3.6.3.5 | **Modulo galeria** | 0.12d | 2016-05-21 10:00 | 2016-05-21 11:00 |  | 57.69d |
| 85 |  | Codificar interfaz | 1h | 2016-05-21 10:00 | 2016-05-21 11:00 | 83 | 56.94d |
| 86 | 2.3.6.3.6 | **Modulo horario** | 0.12d | 2016-05-21 11:00 | 2016-05-21 12:00 |  | 57.69d |
| 87 |  | Codificar interfaz | 1h | 2016-05-21 11:00 | 2016-05-21 12:00 | 85 | 56.94d |
| 88 | 2.3.6.4 | **BACKEND** | 4.56d | 2016-05-21 12:00 | 2016-05-27 12:30 |  | 3.56d |
| 89 | 2.3.6.4.1 | **Modulo CPANEL** | 0.5d | 2016-05-21 12:00 | 2016-05-23 12:00 |  | 57.69d |
| 90 |  | Codificar interfaz | 1h | 2016-05-21 12:00 | 2016-05-21 13:00 | 87 | 56.94d |
| 91 |  | Clases de CPANEL | 2h | 2016-05-23 09:00 | 2016-05-23 11:00 | 90 | 56.94d |
| 92 |  | Realizar conexión a la base de datos | 1h | 2016-05-23 11:00 | 2016-05-23 12:00 | 91 | 56.94d |
| 93 | 2.3.6.4.2 | **Modulo Alumnos** | 1d | 2016-05-23 12:00 | 2016-05-24 12:00 |  | 57.69d |
| 94 |  | Codificar interfaz | 1h | 2016-05-23 12:00 | 2016-05-23 13:00 | 92 | 57.69d |
| 95 |  | Clases de alumnos | 1h | 2016-05-23 15:00 | 2016-05-23 16:00 | 94 | 57.69d |
| 96 |  | Realizar conexión a la base de datos | 1h | 2016-05-23 16:00 | 2016-05-23 17:00 | 95 | 57.69d |
| 97 |  | Alta de alumnos | 1h | 2016-05-23 17:00 | 2016-05-23 18:00 | 96 | 57.69d |
| 98 |  | Baja de alumnos | 1h | 2016-05-23 18:00 | 2016-05-23 19:00 | 97 | 57.69d |
| 99 |  | Actualización de alumnos | 1h | 2016-05-24 09:00 | 2016-05-24 10:00 | 98 | 57.69d |
| 100 |  | Consultas de alumnos | 1h | 2016-05-24 10:00 | 2016-05-24 11:00 | 99 | 57.69d |
| 101 |  | Reportes de alumnos | 1h | 2016-05-24 11:00 | 2016-05-24 12:00 | 100 | 57.69d |
| 102 | 2.3.6.4.3 | **Modulo profesores** | 1.06d | 2016-05-24 12:00 | 2016-05-25 12:30 |  | 57.69d |
| 103 |  | Codificar interfaz | 1h | 2016-05-24 12:00 | 2016-05-24 13:00 | 101 | 57.69d |
| 104 |  | Clases de profesores | 1h | 2016-05-24 15:00 | 2016-05-24 16:00 | 103 | 57.69d |
| 105 |  | Realizar conexión a la base de datos | 1h | 2016-05-24 16:00 | 2016-05-24 17:00 | 104 | 57.69d |
| 106 |  | Alta de profesores | 1.5h | 2016-05-24 17:00 | 2016-05-24 18:30 | 105 | 57.69d |
| 107 |  | Baja de profesores | 1h | 2016-05-24 18:30 | 2016-05-25 09:30 | 106 | 57.69d |
| 108 |  | Actualización de profesores | 1h | 2016-05-25 09:30 | 2016-05-25 10:30 | 107 | 57.69d |
| 109 |  | Consultas de profesores | 1h | 2016-05-25 10:30 | 2016-05-25 11:30 | 108 | 57.69d |
| 110 |  | Reportes de profesores | 1h | 2016-05-25 11:30 | 2016-05-25 12:30 | 109 | 57.69d |
| 111 | 2.3.6.4.4 | **Modulo horarios** | 1d | 2016-05-25 12:30 | 2016-05-26 12:30 |  | 57.69d |
| 112 |  | Codificar interfaz | 1h | 2016-05-25 12:30 | 2016-05-25 15:30 | 110 | 57.69d |
| 113 |  | Clases de horarios | 1h | 2016-05-25 15:30 | 2016-05-25 16:30 | 112 | 57.69d |
| 114 |  | Realizar conexión a la base de datos | 1h | 2016-05-25 16:30 | 2016-05-25 17:30 | 113 | 57.69d |
| 115 |  | Alta de horarios | 1h | 2016-05-25 17:30 | 2016-05-25 18:30 | 114 | 57.69d |
| 116 |  | Baja de horarios | 1h | 2016-05-25 18:30 | 2016-05-26 09:30 | 115 | 57.69d |
| 117 |  | Actualización de horarios | 1h | 2016-05-26 09:30 | 2016-05-26 10:30 | 116 | 57.69d |
| 118 |  | Consultas de horarios | 1h | 2016-05-26 10:30 | 2016-05-26 11:30 | 117 | 57.69d |
| 119 |  | Reportes de horarios | 1h | 2016-05-26 11:30 | 2016-05-26 12:30 | 118 | 57.69d |
| 120 | 2.3.6.4.5 | **Modulo talleres** | 1d | 2016-05-26 12:30 | 2016-05-27 12:30 |  | 0d |
| 121 |  | Codificar interfaz | 1h | 2016-05-26 12:30 | 2016-05-26 15:30 | 119 | 57.69d |
| 122 |  | Clases de talleres | 1h | 2016-05-26 15:30 | 2016-05-26 16:30 | 121 | 57.69d |
| 123 |  | Realizar conexión a la base de datos | 1h | 2016-05-26 16:30 | 2016-05-26 17:30 | 122 | 57.69d |
| 124 |  | Alta de taller | 1h | 2016-05-26 17:30 | 2016-05-26 18:30 | 123 | 57.69d |
| 125 |  | Baja de taller | 1h | 2016-05-26 18:30 | 2016-05-27 09:30 | 124 | 57.69d |
| 126 |  | Actualización de taller | 1h | 2016-05-27 09:30 | 2016-05-27 10:30 | 125 | 57.69d |
| 127 |  | Consultas de taller | 1h | 2016-05-27 10:30 | 2016-05-27 11:30 | 126 | 57.69d |
| 128 |  | Reportes de taller | 1h | 2016-05-27 11:30 | 2016-05-27 12:30 | 127 | 57.69d |
| 129 |  | entrega de el sistema funcional con todos sus modulos integrados | 0d | 2016-05-26 12:30 | 2016-05-26 12:30 |  |  |
| 130 | 2.3.6.5 | **Pruebas** | 0.75d | 2016-05-27 12:30 | 2016-05-28 10:30 |  | 57.69d |
| 131 | 2.3.6.5.1 | **Realizar pruebas de caja blanca** | 0.75d | 2016-05-27 12:30 | 2016-05-28 10:30 |  | 57.69d |
| 132 | 2.3.6.5.1.1 | **Módulos de usuarios** | 0.12d | 2016-05-27 12:30 | 2016-05-27 15:30 |  | 57.69d |
| 133 |  | Pruebas unitarias | 1h | 2016-05-27 12:30 | 2016-05-27 15:30 | 128 | 57.69d |
| 134 | 2.3.6.5.1.2 | **Módulos de login** | 0.62d | 2016-05-27 15:30 | 2016-05-28 10:30 |  | 57.69d |
| 135 |  | Pruebas unitarias | 1h | 2016-05-27 15:30 | 2016-05-27 16:30 | 133 | 57.69d |
| 136 | 2.3.6.5.1.2.2 | **Módulos de talleres** | 0.12d | 2016-05-27 16:30 | 2016-05-27 17:30 |  | 57.69d |
| 137 |  | Pruebas unitarias | 1h | 2016-05-27 16:30 | 2016-05-27 17:30 | 135 | 57.69d |
| 138 | 2.3.6.5.1.2.3 | **Módulos de alumnos** | 0.12d | 2016-05-27 17:30 | 2016-05-27 18:30 |  | 57.69d |
| 139 |  | Pruebas unitarias | 1h | 2016-05-27 17:30 | 2016-05-27 18:30 | 137 | 57.69d |
| 140 | 2.3.6.5.1.2.4 | **Módulos de profesores** | 0.12d | 2016-05-27 18:30 | 2016-05-28 09:30 |  | 57.69d |

| ID | WBS | Task | Duration | Start | Finish | Predecessors | Total float | Constraint |
| --- | --- | --- | --- | --- | --- | --- | --- | --- |
| 141 |  | Pruebas unitarias | 1h | 2016-05-27 18:30 | 2016-05-28 09:30 | 139 | 57.69d |  |
| 142 | 2.3.6.5.1.2.5 | **Módulos de horarios** | 0.12d | 2016-05-28 09:30 | 2016-05-28 10:30 |  | 57.69d |  |
| 143 |  | Pruebas unitarias | 1h | 2016-05-28 09:30 | 2016-05-28 10:30 | 141 | 57.69d |  |
| 144 |  | entregar el sistema con pruevas realizadas y con posibles errores corregidos | 0d | 2016-05-03 18:00 | 2016-05-03 18:00 |  | 79.12d |  |
| 145 | 2.3.8 | **Implementación** | 0.75d | 2016-05-28 10:30 | 2016-05-30 12:30 |  | 57.69d |  |
| 146 |  | Evaluación del hosting | 1h | 2016-05-28 10:30 | 2016-05-28 11:30 | 143 | 57.69d |  |
| 147 |  | Implementar el sitio al hosting | 1h | 2016-05-28 11:30 | 2016-05-28 12:30 | 146 | 57.69d |  |
| 148 |  | Manual de usuario | 1h | 2016-05-28 12:30 | 2016-05-30 09:30 | 147 | 57.69d |  |
| 149 |  | Capacitación | 1h | 2016-05-30 09:30 | 2016-05-30 10:30 | 148 | 57.69d |  |
| 150 | 2.3.8.5 | **Realizar pruebas de caja blanca** | 0.25d | 2016-05-30 10:30 | 2016-05-30 12:30 |  | 57.69d |  |
| 151 |  | Pruebas de rendimiento | 1h | 2016-05-30 10:30 | 2016-05-30 11:30 | 149 | 57.69d |  |
| 152 |  | Pruebas de sistema | 1h | 2016-05-30 11:30 | 2016-05-30 12:30 | 151 | 57.69d |  |
| 153 |  | elegir el hosting en base a preci, espacio y seguridad, subir el sitio a dicho hosting, el manual de usuario contendra una explicacion de como utilizar la aplicación | 0d | 2016-05-30 12:30 | 2016-05-30 12:30 | 152 | 58.56d |  |
| 154 | 2.3.10 | **Cierre de proyecto** | 0.88d | 2016-05-30 12:30 | 2016-05-31 11:30 |  | 57.69d |  |
| 155 |  | Carta de aceptación | 1h | 2016-05-30 12:30 | 2016-05-30 15:30 | 152 | 57.69d |  |
| 156 |  | Acta de cierre de proyecto | 1h | 2016-05-30 15:30 | 2016-05-30 16:30 | 155 | 57.69d |  |
| 157 |  | Evaluación de desempeño | 1h | 2016-05-30 16:30 | 2016-05-30 17:30 | 156 | 57.69d |  |
| 158 |  | Junta de lecciones aprendidas | 1h | 2016-05-30 17:30 | 2016-05-30 18:30 | 157 | 57.69d |  |
| 159 |  | Revisión de adherencias de procesos | 1h | 2016-05-30 18:30 | 2016-05-31 09:30 | 158 | 57.69d |  |
| 160 |  | Liberación de los recursos | 1h | 2016-05-31 09:30 | 2016-05-31 10:30 | 159 | 57.69d |  |
| 161 |  | Informe final(cierre) | 1h | 2016-05-31 10:30 | 2016-05-31 11:30 | 160 | 57.69d |  |
| 162 |  | carta de aceptación debe ser firmada por el cliente asi como la liberación de recursos | 0d | 2016-05-31 11:30 | 2016-05-31 11:30 | 161 | 57.69d |  |
| 165 | 2.3.11 | **Revisión** | 77d | 2016-05-06 09:00 | 2016-08-12 09:00 |  | 0d |  |
| 166 |  | Revisión 1 | 0d | 2016-05-06 09:00 | 2016-05-06 09:00 |  |  | start no earlier than 2016-05-06 09:00 |
| 167 |  | Revisión 2 | 0d | 2016-05-13 09:00 | 2016-05-13 09:00 |  |  | start no earlier than 2016-05-13 09:00 |
| 168 |  | Revisión 3 | 0d | 2016-05-20 09:00 | 2016-05-20 09:00 |  |  | start no earlier than 2016-05-20 09:00 |
| 169 |  | Revisión 4 | 0d | 2016-05-27 09:00 | 2016-05-27 09:00 |  |  | start no earlier than 2016-05-27 09:00 |
| 170 |  | Revisión 5 | 0d | 2016-06-03 09:00 | 2016-06-03 09:00 |  |  | start no earlier than 2016-06-03 09:00 |
| 171 |  | Revisión 6 | 0d | 2016-06-10 09:00 | 2016-06-10 09:00 |  |  | start no earlier than 2016-06-10 09:00 |
| 172 |  | Revisión 7 | 0d | 2016-06-17 09:00 | 2016-06-17 09:00 |  |  | start no earlier than 2016-06-17 09:00 |
| 173 |  | Revisión 8 | 0d | 2016-06-24 09:00 | 2016-06-24 09:00 |  |  | start no earlier than 2016-06-24 09:00 |
| 174 |  | Revisión 9 | 0d | 2016-07-01 09:00 | 2016-07-01 09:00 |  |  | start no earlier than 2016-07-01 09:00 |
| 175 |  | Revisión 10 | 0d | 2016-07-08 09:00 | 2016-07-08 09:00 |  |  | start no earlier than 2016-07-08 09:00 |
| 176 |  | Revisión 11 | 0d | 2016-07-15 09:00 | 2016-07-15 09:00 |  |  | start no earlier than 2016-07-15 09:00 |
| 177 |  | Revisión 12 | 0d | 2016-07-22 09:00 | 2016-07-22 09:00 |  |  | start no earlier than 2016-07-22 09:00 |
| 178 |  | Revisión 13 | 0d | 2016-07-29 09:00 | 2016-07-29 09:00 |  |  | start no earlier than 2016-07-29 09:00 |
| 179 |  | Revisión 14 | 0d | 2016-08-05 09:00 | 2016-08-05 09:00 |  |  | start no earlier than 2016-08-05 09:00 |
| 180 |  | Revisión 15 | 0d | 2016-08-12 09:00 | 2016-08-12 09:00 |  |  | start no earlier than 2016-08-12 09:00 |

## Version 2 (saved 2016-08-05)

Note of the change: agregacion de Requerimientos

Last finish stays 2016-08-12. Complete tasks 0 → 117.

Changed:

| ID | Task | Start | Finish | Duration | Complete | Total float | Predecessors | Other |
| --- | --- | --- | --- | --- | --- | --- | --- | --- |
| 1 | **Plan preeliminar** | 2016-05-02 09:00 A | 2016-05-03 18:00 A |  | 0% → 100% |  |  |  |
| 2 | Generar WBS del producto inicial | 2016-05-02 09:00 A | 2016-05-02 13:00 A |  | 0% → 100% | 0d → none |  | resources Analista → Yesica Mejia Ramirez(Analista) |
| 3 | Generar project charter | 2016-05-02 15:00 A | 2016-05-02 16:00 A |  | 0% → 100% | 0d → none |  | resources Administrador de proyecto → Estefani Garduño Alvarado(Administrador de proyecto) |
| 4 | Plan preeliminar del proyecto | 2016-05-02 16:00 A | 2016-05-03 16:00 A |  | 0% → 100% | 0d → none |  | resources Analista → Yesica Mejia Ramirez(Analista) |
| 5 | Matriz de comunicación | 2016-05-03 16:00 A | 2016-05-03 17:00 A |  | 0% → 100% | 0d → none |  | resources Analista → Yesica Mejia Ramirez(Analista) |
| 6 | Minuta de inicio | 2016-05-03 17:00 A | 2016-05-03 18:00 A |  | 0% → 100% | 0d → none |  | resources Administrador de proyecto → Estefani Garduño Alvarado(Administrador de proyecto) |
| 7 | El WBS contiene todas las tareas a realizar para integrar el proyecto, el project charter contiene participantes(roles), presupuesto,alcance, duración , la matriz de comunicaciones contiene los responsables de elaborar los entregables y su distribución | 2016-05-02 09:00 A | 2016-05-02 09:00 A |  | 0% → 100% | 1.88d → none |  |  |
| 8 | **Site Cultura Deporte 01** | 2016-05-03 18:00 A |  |  | 0% → 93% |  | 1 → 6 |  |
| 9 | Formación del equipo | 2016-05-03 18:00 A | 2016-05-04 18:00 A |  | 0% → 100% | 56.94d → none |  | resources Administrador de proyecto → Estefani Garduño Alvarado(Administrador de proyecto) |
| 10 | El equipo estara conformado con las personas que cumplan con el perfil requerido | 2016-05-03 18:00 A | 2016-05-03 18:00 A |  | 0% → 100% | 79.12d → none |  |  |
| 11 | **Construcción** | 2016-05-03 18:00 → 2016-05-04 18:00 A (+1d) |  | 79.12d → 78.12d | 0% → 92% |  | 2 → 9 |  |
| 12 | **Analisis** | 2016-05-04 18:00 A |  |  | 0% → 99% | 57.69d → 0d | 2 → 9 |  |
| 13 | **Elicitación** | 2016-05-04 18:00 A | 2016-05-09 13:00 A |  | 0% → 100% | 57.69d → none | 2 → 9 |  |
| 14 | Generar lista de proveedores | 2016-05-04 18:00 A | 2016-05-05 10:00 A |  | 0% → 100% | 56.94d → none |  | resources Analista; Administrador de proyecto → Yesica Mejia Ramirez(Analista); Estefani Garduño Alvarado(Administrador de proyecto) |
| 15 | Evaluar proveedores de requerimientos | 2016-05-05 10:00 A | 2016-05-05 11:00 A |  | 0% → 100% | 56.94d → none |  | resources Analista; Administrador de proyecto → Yesica Mejia Ramirez(Analista); Estefani Garduño Alvarado(Administrador de proyecto) |
| 16 | Definir estrategia de recolección de datos | 2016-05-05 11:00 A | 2016-05-05 11:30 A |  | 0% → 100% | 56.94d → none |  | resources Analista → Yesica Mejia Ramirez(Analista); Estefani Garduño Alvarado(Administrador de proyecto) |
| 17 | Planificación de reuniones de licitación | 2016-05-05 11:30 A | 2016-05-05 13:00 A |  | 0% → 100% | 56.94d → none |  | resources Analista; Administrador de proyecto → Yesica Mejia Ramirez(Analista); Estefani Garduño Alvarado(Administrador de proyecto) |
| 18 | Identificar procesos del sistema | 2016-05-05 15:00 A | 2016-05-06 13:00 A |  | 0% → 100% | 56.94d → none |  | resources Analista → Yesica Mejia Ramirez(Analista); Estefani Garduño Alvarado(Administrador de proyecto) |
| 19 | identificar requerimientos funcionales | 2016-05-06 15:00 A | 2016-05-07 13:00 A |  | 0% → 100% | 56.94d → none |  | resources Analista → Yesica Mejia Ramirez(Analista); Estefani Garduño Alvarado(Administrador de proyecto) |
| 20 | Identificar requerimientos no funcionales | 2016-05-09 09:00 A | 2016-05-09 13:00 A |  | 0% → 100% | 56.94d → none | 19 → 19FS-2h | resources Analista → Yesica Mejia Ramirez(Analista); Estefani Garduño Alvarado(Administrador de proyecto) |
| 21 | **Especificación** | 2016-05-09 15:00 A | 2016-05-10 13:00 A |  | 0% → 100% | 57.69d → none | none → 20 |  |
| 22 | Evaluación de requerimientos | 2016-05-09 15:00 A | 2016-05-09 17:00 A |  | 0% → 100% | 56.94d → none |  | resources Analista → Yesica Mejia Ramirez(Analista); Estefani Garduño Alvarado(Administrador de proyecto) |
| 23 | SRS | 2016-05-09 17:00 A | 2016-05-10 13:00 A |  | 0% → 100% | 56.94d → none | 22 → 22FS-2h | resources Analista → Yesica Mejia Ramirez(Analista) |
| 24 | **Gestion de requerimientos** | 2016-05-10 15:00 A |  |  | 0% → 99% | 57.69d → 0d | none → 23 | resources none → Estefani Garduño Alvarado(Administrador de proyecto) |
| 25 | Priorizar requerimientos | 2016-05-10 15:00 A | 2016-05-10 17:00 A |  | 0% → 100% | 56.94d → none | 21 → 23 | was named priorizar requerimientos; resources Analista → Yesica Mejia Ramirez(Analista); Estefani Garduño Alvarado(Administrador de proyecto) |
| 26 | Almacenar en repositorio | 2016-05-10 17:00 A | 2016-05-10 17:30 A |  | 0% → 100% | 56.94d → none |  | resources Analista → Yesica Mejia Ramirez(Analista); Estefani Garduño Alvarado(Administrador de proyecto) |
| 27 | Asignar a desarrolladores de software | 2016-05-10 17:30 A | 2016-05-10 18:30 A |  | 0% → 100% | 56.94d → none |  | resources Analista → Yesica Mejia Ramirez(Analista); Estefani Garduño Alvarado(Administrador de proyecto) |
| 28 | Administración de cambios de requerimientos | 2016-05-10 18:30 A | 2016-05-10 19:00 A |  | 0% → 100% | 56.94d → none |  | resources Analista → Yesica Mejia Ramirez(Analista); Estefani Garduño Alvarado(Administrador de proyecto) |
| 29 | Administración de la trazabilidad de requerimientos | 2016-05-11 09:00 A | 2016-05-11 16:00 A |  | 0% → 100% | 56.94d → none |  | resources Analista → Yesica Mejia Ramirez(Analista); Estefani Garduño Alvarado(Administrador de proyecto) |
| 30 | Entregar requerimientos funcionales y no funcionales, proveedores, asignacion de requerimientos | 2016-05-11 16:00 → 2016-05-04 18:00 (-7d) | 2016-05-11 16:00 → 2016-05-04 18:00 (-7d) |  |  | 72.88d → 0d | 29 → none |  |
| 31 | **Planificación** | 2016-05-11 16:00 A | 2016-05-16 11:00 A |  | 0% → 100% | 57.69d → none | none → 29 |  |
| 32 | Definición del ciclo de vida | 2016-05-11 16:00 A | 2016-05-11 16:30 A |  | 0% → 100% | 56.94d → none |  | resources Analista; Administrador de proyecto; Diseñador → Yesica Mejia Ramirez(Analista); Estefani Garduño Alvarado(Administrador de proyecto); Alexis Sebastian Ramos (Diseñador) |
| 33 | Definición de politicas | 2016-05-11 16:30 A | 2016-05-11 17:00 A |  | 0% → 100% | 56.94d → none |  | resources Administrador de proyecto → Estefani Garduño Alvarado(Administrador de proyecto) |
| 34 | Actualizar plan de proyecto | 2016-05-11 17:00 A | 2016-05-11 19:00 A |  | 0% → 100% | 56.94d → none |  | resources Analista → Yesica Mejia Ramirez(Analista); Estefani Garduño Alvarado(Administrador de proyecto) |
| 35 | Actualizar matriz de comunicación | 2016-05-12 09:00 A | 2016-05-12 10:00 A |  | 0% → 100% | 56.94d → none |  | resources Analista → Yesica Mejia Ramirez(Analista); Estefani Garduño Alvarado(Administrador de proyecto) |
| 36 | **Estimación** | 2016-05-12 10:00 A | 2016-05-12 18:00 A |  | 0% → 100% | 57.69d → none | none → 35 |  |
| 37 | Actualizar WBS/Calendario | 2016-05-12 10:00 A | 2016-05-12 11:00 A |  | 0% → 100% | 56.94d → none |  | resources Analista → Yesica Mejia Ramirez(Analista); Estefani Garduño Alvarado(Administrador de proyecto) |
| 38 | Diccionario del WBS | 2016-05-12 11:00 A | 2016-05-12 17:00 A |  | 0% → 100% | 56.94d → none |  | resources Analista → Yesica Mejia Ramirez(Analista); Estefani Garduño Alvarado(Administrador de proyecto) |
| 39 | Costos | 2016-05-12 17:00 A | 2016-05-12 18:00 A |  | 0% → 100% | 56.94d → none | 38 → 38FS-2h | resources Administrador de proyecto → Estefani Garduño Alvarado(Administrador de proyecto) |
| 40 | **Riesgos** | 2016-05-12 18:00 A | 2016-05-14 12:00 A |  | 0% → 100% | 57.69d → none | none → 39 |  |
| 41 | Identificación de riesgos | 2016-05-12 18:00 A | 2016-05-13 16:00 A |  | 0% → 100% | 56.94d → none |  | resources Administrador de proyecto; Analista → Estefani Garduño Alvarado(Administrador de proyecto); Yesica Mejia Ramirez(Analista) |
| 42 | Asignación de prioridades | 2016-05-13 16:00 A | 2016-05-13 18:00 A |  | 0% → 100% | 56.94d → none |  | was named asignación de prioridades; resources Administrador de proyecto → Estefani Garduño Alvarado(Administrador de proyecto) |
| 43 | Plan de mitigación y contingencia | 2016-05-13 18:00 A | 2016-05-14 12:00 A |  | 0% → 100% | 56.94d → none |  | resources Administrador de proyecto → Estefani Garduño Alvarado(Administrador de proyecto) |
| 44 | **Aseguramiento de la calidad** | 2016-05-14 12:00 A | 2016-05-16 11:00 A |  | 0% → 100% | 57.69d → none | none → 43 |  |
| 45 | Plan de gestión de la configuración | 2016-05-14 12:00 A | 2016-05-16 10:00 A |  | 0% → 100% | 57.69d → none |  | resources Administrador de la configuración → Yesica Mejia Ramirez (Administrador de la configuración); Estefani Garduño Alvarado(Administrador de proyecto) |
| 46 | Junta de arranque de construcción | 2016-05-16 10:00 A | 2016-05-16 11:00 A |  | 0% → 100% | 56.94d → none |  | resources Administrador de proyecto → Estefani Garduño Alvarado(Administrador de proyecto) |
| 47 | Tener el ciclo de vida a seguir, actualizar el plan del proyecto así como matriz de comunicaciónes, sacar costos, definicion de riesgos con su plan de mitigación | 2016-05-16 11:00 A | 2016-05-16 11:00 A |  | 0% → 100% | 69.75d → none |  | was named tener el ciclo de vida a seguir, actualizar el plan del proyecto así como matriz de comunicaciónes, sacar costos, definicion de riesgos con su plan de mitigación |
| 48 | **Diseño** | 2016-05-16 11:00 A | 2016-05-18 18:00 A |  | 0% → 100% | 57.69d → none | none → 47 |  |
| 49 | Definir la arquitectura | 2016-05-16 11:00 A | 2016-05-16 13:00 A |  | 0% → 100% | 56.94d → none | 46 → 47 | resources Diseñador; Administrador de proyecto; Analista → Alexis Sebastian Ramos (Diseñador); Estefani Garduño Alvarado(Administrador de proyecto); Yesica Mejia Ramirez(Analista) |
| 50 | Realizar casos de uso | 2016-05-16 15:00 A | 2016-05-16 19:00 A |  | 0% → 100% | 56.94d → none |  | resources Diseñador → Alexis Sebastian Ramos (Diseñador); Estefani Garduño Alvarado(Administrador de proyecto) |
| 51 | Realizar diagramas de secuencia | 2016-05-17 09:00 A | 2016-05-17 11:00 A |  | 0% → 100% | 56.94d → none | 50 → 50FS-1h | resources Diseñador → Alexis Sebastian Ramos (Diseñador); Estefani Garduño Alvarado(Administrador de proyecto) |
| 52 | Realizar diagramas de clases | 2016-05-17 11:00 A | 2016-05-17 12:00 A |  | 0% → 100% | 56.94d → none |  | resources Diseñador → Alexis Sebastian Ramos (Diseñador); Estefani Garduño Alvarado(Administrador de proyecto) |
| 53 | Realizar diagrama de componentes | 2016-05-17 12:00 A | 2016-05-17 13:00 A |  | 0% → 100% | 56.94d → none |  | resources Diseñador → Alexis Sebastian Ramos (Diseñador); Estefani Garduño Alvarado(Administrador de proyecto) |
| 54 | Realizar diagrama de despliegue | 2016-05-17 15:00 A | 2016-05-17 17:00 A |  | 0% → 100% | 56.94d → none |  | resources Diseñador → Alexis Sebastian Ramos (Diseñador); Estefani Garduño Alvarado(Administrador de proyecto) |
| 55 | Realizar el mapa de navegación | 2016-05-17 17:00 A | 2016-05-17 18:00 A |  | 0% → 100% | 56.94d → none |  | resources Diseñador → Alexis Sebastian Ramos (Diseñador); Estefani Garduño Alvarado(Administrador de proyecto) |
| 56 | Realizar maquetado (bocetos) | 2016-05-17 18:00 A | 2016-05-18 16:00 A |  | 0% → 100% | 56.94d → none | 55 → 55FS-2h | resources Diseñador → Alexis Sebastian Ramos (Diseñador); Estefani Garduño Alvarado(Administrador de proyecto) |
| 57 | **Diseño de diagramas de la base de datos** | 2016-05-18 16:00 A | 2016-05-18 18:00 A |  | 0% → 100% | 57.69d → none | none → 56 |  |
| 58 | Realizar el diagrama E-R | 2016-05-18 16:00 A | 2016-05-18 17:00 A |  | 0% → 100% | 56.94d → none |  | resources Diseñador → Alexis Sebastian Ramos (Diseñador); Estefani Garduño Alvarado(Administrador de proyecto) |
| 59 | Realizar el diagrama Relacional | 2016-05-18 17:00 A | 2016-05-18 18:00 A |  | 0% → 100% | 56.94d → none |  | resources Diseñador → Alexis Sebastian Ramos (Diseñador); Estefani Garduño Alvarado(Administrador de proyecto) |
| 61 | **Codificación** | 2016-05-18 18:00 A | 2016-05-28 10:30 A |  | 0% → 100% | 6.06d → none | none → 60 |  |
| 62 | Codificación de la base de datos | 2016-05-18 18:00 A | 2016-05-19 11:00 A |  | 0% → 100% | 56.94d → none | 59 → 60 | resources Programador → Francisco Bautista (Programador); Estefani Garduño Alvarado(Administrador de proyecto) |
| 63 | **Modulo Usuarios** | 2016-05-19 11:00 A | 2016-05-20 11:30 A |  | 0% → 100% | 57.69d → none | none → 62 |  |
| 64 | Codificar interfaz | 2016-05-19 11:00 A | 2016-05-19 12:00 A |  | 0% → 100% | 56.94d → none |  | resources Programador → Francisco Bautista (Programador); Estefani Garduño Alvarado(Administrador de proyecto) |
| 65 | Clases de usuario | 2016-05-19 12:00 A | 2016-05-19 16:00 A |  | 0% → 100% | 56.94d → none | 64 → 64FS-1h | resources Programador → Francisco Bautista (Programador); Estefani Garduño Alvarado(Administrador de proyecto) |
| 66 | Realizar conexión a la base de datos | 2016-05-19 16:00 A | 2016-05-19 16:30 A |  | 0% → 100% | 56.94d → none |  | resources Programador → Francisco Bautista (Programador); Estefani Garduño Alvarado(Administrador de proyecto) |
| 67 | Alta de usuario | 2016-05-19 16:30 A | 2016-05-19 17:00 A |  | 0% → 100% | 56.94d → none |  | resources Programador → Francisco Bautista (Programador); Estefani Garduño Alvarado(Administrador de proyecto) |
| 68 | Baja de usuario | 2016-05-19 17:00 A | 2016-05-19 17:30 A |  | 0% → 100% | 56.94d → none |  | resources Programador → Francisco Bautista (Programador); Estefani Garduño Alvarado(Administrador de proyecto) |
| 69 | Actualización de usuario | 2016-05-19 17:30 A | 2016-05-19 18:30 A |  | 0% → 100% | 56.94d → none |  | resources Programador → Francisco Bautista (Programador); Estefani Garduño Alvarado(Administrador de proyecto) |
| 70 | Consultas de usuario | 2016-05-19 18:30 A | 2016-05-20 09:30 A |  | 0% → 100% | 56.94d → none |  | resources Programador → Francisco Bautista (Programador); Estefani Garduño Alvarado(Administrador de proyecto) |
| 71 | Reportes de usuario | 2016-05-20 09:30 A | 2016-05-20 11:30 A |  | 0% → 100% | 56.94d → none |  | resources Programador → Francisco Bautista (Programador); Estefani Garduño Alvarado(Administrador de proyecto) |

| ID | Task | Start | Finish | Complete | Total float | Predecessors | Other |
| --- | --- | --- | --- | --- | --- | --- | --- |
| 72 | **FRONTEND** | 2016-05-20 11:30 A | 2016-05-21 12:00 A | 0% → 100% | 57.69d → none | none → 71 |  |
| 73 | **Modulo inicio** | 2016-05-20 11:30 A | 2016-05-20 15:30 A | 0% → 100% | 57.69d → none | none → 71 |  |
| 74 | Codificar interfaz | 2016-05-20 11:30 A | 2016-05-20 12:30 A | 0% → 100% | 56.94d → none |  | resources Programador → Francisco Bautista (Programador); Estefani Garduño Alvarado(Administrador de proyecto) |
| 75 | Clases de inicio | 2016-05-20 12:30 A | 2016-05-20 15:30 A | 0% → 100% | 56.94d → none | 74 → 74FS-0.5h | resources Programador → Francisco Bautista (Programador); Estefani Garduño Alvarado(Administrador de proyecto) |
| 76 | **Modulo login** | 2016-05-20 15:30 A | 2016-05-20 18:00 A | 0% → 100% | 57.69d → none | none → 75 |  |
| 77 | Codificar interfaz | 2016-05-20 15:30 A | 2016-05-20 16:30 A | 0% → 100% | 56.94d → none |  | resources Programador → Francisco Bautista (Programador); Estefani Garduño Alvarado(Administrador de proyecto) |
| 78 | Clases de login | 2016-05-20 16:30 A | 2016-05-20 17:30 A | 0% → 100% | 56.94d → none | 77 → 77FS-0.5d | resources Programador → Francisco Bautista (Programador); Estefani Garduño Alvarado(Administrador de proyecto) |
| 79 | Realizar conexión a la base de datos | 2016-05-20 17:30 A | 2016-05-20 18:00 A | 0% → 100% | 56.94d → none |  | resources Programador → Francisco Bautista (Programador); Estefani Garduño Alvarado(Administrador de proyecto) |
| 80 | **Modulo historia** | 2016-05-20 18:00 A | 2016-05-20 19:00 A | 0% → 100% | 57.69d → none | none → 79 |  |
| 81 | Codificar interfaz | 2016-05-20 18:00 A | 2016-05-20 19:00 A | 0% → 100% | 56.94d → none |  | resources Programador → Francisco Bautista (Programador); Estefani Garduño Alvarado(Administrador de proyecto) |
| 82 | **Modulo Talleres** | 2016-05-21 09:00 A | 2016-05-21 10:00 A | 0% → 100% | 57.69d → none | none → 81 |  |
| 83 | Codificar interfaz | 2016-05-21 09:00 A | 2016-05-21 10:00 A | 0% → 100% | 56.94d → none |  | resources Programador → Francisco Bautista (Programador); Estefani Garduño Alvarado(Administrador de proyecto) |
| 84 | **Modulo galeria** | 2016-05-21 10:00 A | 2016-05-21 11:00 A | 0% → 100% | 57.69d → none | none → 83 |  |
| 85 | Codificar interfaz | 2016-05-21 10:00 A | 2016-05-21 11:00 A | 0% → 100% | 56.94d → none |  | resources Programador → Francisco Bautista (Programador); Estefani Garduño Alvarado(Administrador de proyecto) |
| 86 | **Modulo horario** | 2016-05-21 11:00 A | 2016-05-21 12:00 A | 0% → 100% | 57.69d → none | none → 85 |  |
| 87 | Codificar interfaz | 2016-05-21 11:00 A | 2016-05-21 12:00 A | 0% → 100% | 56.94d → none |  | resources Programador → Francisco Bautista (Programador); Estefani Garduño Alvarado(Administrador de proyecto) |
| 88 | **BACKEND** | 2016-05-21 12:00 A | 2016-05-27 12:30 A | 0% → 100% | 3.56d → none | none → 87 |  |
| 89 | **Modulo CPANEL** | 2016-05-21 12:00 A | 2016-05-23 12:00 A | 0% → 100% | 57.69d → none | none → 87 |  |
| 90 | Codificar interfaz | 2016-05-21 12:00 A | 2016-05-21 13:00 A | 0% → 100% | 56.94d → none |  | resources Programador → Francisco Bautista (Programador); Estefani Garduño Alvarado(Administrador de proyecto) |
| 91 | Clases de CPANEL | 2016-05-23 09:00 A | 2016-05-23 11:00 A | 0% → 100% | 56.94d → none | 90 → 90FS-0.5h | resources Programador → Francisco Bautista (Programador); Estefani Garduño Alvarado(Administrador de proyecto) |
| 92 | Realizar conexión a la base de datos | 2016-05-23 11:00 A | 2016-05-23 12:00 A | 0% → 100% | 56.94d → none |  | resources Programador → Francisco Bautista (Programador); Estefani Garduño Alvarado(Administrador de proyecto) |
| 93 | **Modulo Alumnos** | 2016-05-23 12:00 A | 2016-05-24 12:00 A | 0% → 100% | 57.69d → none | none → 92 |  |
| 94 | Codificar interfaz | 2016-05-23 12:00 A | 2016-05-23 13:00 A | 0% → 100% | 57.69d → none |  | resources Programador → Francisco Bautista (Programador); Estefani Garduño Alvarado(Administrador de proyecto) |
| 95 | Clases de alumnos | 2016-05-23 15:00 A | 2016-05-23 16:00 A | 0% → 100% | 57.69d → none | 94 → 94FS-0.5h | resources Programador → Francisco Bautista (Programador); Estefani Garduño Alvarado(Administrador de proyecto) |
| 96 | Realizar conexión a la base de datos | 2016-05-23 16:00 A | 2016-05-23 17:00 A | 0% → 100% | 57.69d → none |  | resources Programador → Francisco Bautista (Programador); Estefani Garduño Alvarado(Administrador de proyecto) |
| 97 | Alta de alumnos | 2016-05-23 17:00 A | 2016-05-23 18:00 A | 0% → 100% | 57.69d → none |  | resources Programador → Francisco Bautista (Programador); Estefani Garduño Alvarado(Administrador de proyecto) |
| 98 | Baja de alumnos | 2016-05-23 18:00 A | 2016-05-23 19:00 A | 0% → 100% | 57.69d → none |  | resources Programador → Francisco Bautista (Programador); Estefani Garduño Alvarado(Administrador de proyecto) |
| 99 | Actualización de alumnos | 2016-05-24 09:00 A | 2016-05-24 10:00 A | 0% → 100% | 57.69d → none |  | resources Programador → Francisco Bautista (Programador); Estefani Garduño Alvarado(Administrador de proyecto) |
| 100 | Consultas de alumnos | 2016-05-24 10:00 A | 2016-05-24 11:00 A | 0% → 100% | 57.69d → none |  | resources Programador → Francisco Bautista (Programador); Estefani Garduño Alvarado(Administrador de proyecto) |
| 101 | Reportes de alumnos | 2016-05-24 11:00 A | 2016-05-24 12:00 A | 0% → 100% | 57.69d → none |  | resources Programador → Francisco Bautista (Programador); Estefani Garduño Alvarado(Administrador de proyecto) |
| 102 | **Modulo profesores** | 2016-05-24 12:00 A | 2016-05-25 12:30 A | 0% → 100% | 57.69d → none | none → 101 |  |
| 103 | Codificar interfaz | 2016-05-24 12:00 A | 2016-05-24 13:00 A | 0% → 100% | 57.69d → none |  | resources Programador → Francisco Bautista (Programador); Estefani Garduño Alvarado(Administrador de proyecto) |
| 104 | Clases de profesores | 2016-05-24 15:00 A | 2016-05-24 16:00 A | 0% → 100% | 57.69d → none | 103 → 103FS-0.5h | resources Programador → Francisco Bautista (Programador); Estefani Garduño Alvarado(Administrador de proyecto) |
| 105 | Realizar conexión a la base de datos | 2016-05-24 16:00 A | 2016-05-24 17:00 A | 0% → 100% | 57.69d → none |  | resources Programador → Francisco Bautista (Programador); Estefani Garduño Alvarado(Administrador de proyecto) |
| 106 | Alta de profesores | 2016-05-24 17:00 A | 2016-05-24 18:30 A | 0% → 100% | 57.69d → none |  | resources Programador → Francisco Bautista (Programador); Estefani Garduño Alvarado(Administrador de proyecto) |
| 107 | Baja de profesores | 2016-05-24 18:30 A | 2016-05-25 09:30 A | 0% → 100% | 57.69d → none |  | resources Programador → Francisco Bautista (Programador); Estefani Garduño Alvarado(Administrador de proyecto) |
| 108 | Actualización de profesores | 2016-05-25 09:30 A | 2016-05-25 10:30 A | 0% → 100% | 57.69d → none |  | resources Programador → Francisco Bautista (Programador); Estefani Garduño Alvarado(Administrador de proyecto) |
| 109 | Consultas de profesores | 2016-05-25 10:30 A | 2016-05-25 11:30 A | 0% → 100% | 57.69d → none |  | resources Programador → Francisco Bautista (Programador); Estefani Garduño Alvarado(Administrador de proyecto) |
| 110 | Reportes de profesores | 2016-05-25 11:30 A | 2016-05-25 12:30 A | 0% → 100% | 57.69d → none |  | resources Programador → Francisco Bautista (Programador); Estefani Garduño Alvarado(Administrador de proyecto) |
| 111 | **Modulo horarios** | 2016-05-25 12:30 A | 2016-05-26 12:30 A | 0% → 100% | 57.69d → none | none → 110 |  |
| 112 | Codificar interfaz | 2016-05-25 12:30 A | 2016-05-25 15:30 A | 0% → 100% | 57.69d → none |  | resources Programador → Francisco Bautista (Programador); Estefani Garduño Alvarado(Administrador de proyecto) |
| 113 | Clases de horarios | 2016-05-25 15:30 A | 2016-05-25 16:30 A | 0% → 100% | 57.69d → none | 112 → 112FS-0.5h | resources Programador → Francisco Bautista (Programador); Estefani Garduño Alvarado(Administrador de proyecto) |
| 114 | Realizar conexión a la base de datos | 2016-05-25 16:30 A | 2016-05-25 17:30 A | 0% → 100% | 57.69d → none |  | resources Programador → Francisco Bautista (Programador); Estefani Garduño Alvarado(Administrador de proyecto) |
| 115 | Alta de horarios | 2016-05-25 17:30 A | 2016-05-25 18:30 A | 0% → 100% | 57.69d → none |  | resources Programador → Francisco Bautista (Programador); Estefani Garduño Alvarado(Administrador de proyecto) |
| 116 | Baja de horarios | 2016-05-25 18:30 A | 2016-05-26 09:30 A | 0% → 100% | 57.69d → none |  | resources Programador → Francisco Bautista (Programador); Estefani Garduño Alvarado(Administrador de proyecto) |
| 117 | Actualización de horarios | 2016-05-26 09:30 A | 2016-05-26 10:30 A | 0% → 100% | 57.69d → none |  | resources Programador → Francisco Bautista (Programador); Estefani Garduño Alvarado(Administrador de proyecto) |
| 118 | Consultas de horarios | 2016-05-26 10:30 A | 2016-05-26 11:30 A | 0% → 100% | 57.69d → none |  | resources Programador → Francisco Bautista (Programador); Estefani Garduño Alvarado(Administrador de proyecto) |
| 119 | Reportes de horarios | 2016-05-26 11:30 A | 2016-05-26 12:30 A | 0% → 100% | 57.69d → none |  | resources Programador → Francisco Bautista (Programador); Estefani Garduño Alvarado(Administrador de proyecto) |
| 120 | **Modulo talleres** | 2016-05-26 12:30 A | 2016-05-27 12:30 A | 0% → 100% | 0d → none | none → 119 |  |
| 121 | Codificar interfaz | 2016-05-26 12:30 A | 2016-05-26 15:30 A | 0% → 100% | 57.69d → none |  | resources Programador → Francisco Bautista (Programador); Estefani Garduño Alvarado(Administrador de proyecto) |
| 122 | Clases de talleres | 2016-05-26 15:30 A | 2016-05-26 16:30 A | 0% → 100% | 57.69d → none | 121 → 121FS-0.5h | resources Programador → Francisco Bautista (Programador); Estefani Garduño Alvarado(Administrador de proyecto) |
| 123 | Realizar conexión a la base de datos | 2016-05-26 16:30 A | 2016-05-26 17:30 A | 0% → 100% | 57.69d → none |  | resources Programador → Francisco Bautista (Programador); Estefani Garduño Alvarado(Administrador de proyecto) |
| 124 | Alta de taller | 2016-05-26 17:30 A | 2016-05-26 18:30 A | 0% → 100% | 57.69d → none |  | resources Programador → Francisco Bautista (Programador); Estefani Garduño Alvarado(Administrador de proyecto) |
| 125 | Baja de taller | 2016-05-26 18:30 A | 2016-05-27 09:30 A | 0% → 100% | 57.69d → none |  | resources Programador → Francisco Bautista (Programador); Estefani Garduño Alvarado(Administrador de proyecto) |
| 126 | Actualización de taller | 2016-05-27 09:30 A | 2016-05-27 10:30 A | 0% → 100% | 57.69d → none |  | resources Programador → Francisco Bautista (Programador); Estefani Garduño Alvarado(Administrador de proyecto) |
| 127 | Consultas de taller | 2016-05-27 10:30 A | 2016-05-27 11:30 A | 0% → 100% | 57.69d → none |  | resources Programador → Francisco Bautista (Programador); Estefani Garduño Alvarado(Administrador de proyecto) |
| 128 | Reportes de taller | 2016-05-27 11:30 A | 2016-05-27 12:30 A | 0% → 100% | 57.69d → none |  | resources Programador → Francisco Bautista (Programador); Estefani Garduño Alvarado(Administrador de proyecto) |
| 129 | entrega de el sistema funcional con todos sus modulos integrados | 2016-05-26 12:30 A | 2016-05-26 12:30 A | 0% → 100% |  |  |  |
| 130 | **Pruebas** | 2016-05-27 12:30 A | 2016-05-28 10:30 A | 0% → 100% | 57.69d → none | none → 128 |  |
| 131 | **Realizar pruebas de caja blanca** | 2016-05-27 12:30 A | 2016-05-28 10:30 A | 0% → 100% | 57.69d → none | none → 128 |  |
| 132 | **Módulos de usuarios** | 2016-05-27 12:30 A | 2016-05-27 15:30 A | 0% → 100% | 57.69d → none | none → 128 |  |
| 133 | Pruebas unitarias | 2016-05-27 12:30 A | 2016-05-27 15:30 A | 0% → 100% | 57.69d → none |  | resources Tester → Francisco Bautista (Tester); Estefani Garduño Alvarado(Administrador de proyecto) |
| 134 | **Módulos de login** | 2016-05-27 15:30 A | 2016-05-28 10:30 A | 0% → 100% | 57.69d → none |  |  |
| 135 | Pruebas unitarias | 2016-05-27 15:30 A | 2016-05-27 16:30 A | 0% → 100% | 57.69d → none |  | resources Tester → Francisco Bautista (Tester); Estefani Garduño Alvarado(Administrador de proyecto) |
| 136 | **Módulos de talleres** | 2016-05-27 16:30 A | 2016-05-27 17:30 A | 0% → 100% | 57.69d → none |  |  |
| 137 | Pruebas unitarias | 2016-05-27 16:30 A | 2016-05-27 17:30 A | 0% → 100% | 57.69d → none |  | resources Tester → Francisco Bautista (Tester); Estefani Garduño Alvarado(Administrador de proyecto) |
| 138 | **Módulos de alumnos** | 2016-05-27 17:30 A | 2016-05-27 18:30 A | 0% → 100% | 57.69d → none |  |  |
| 139 | Pruebas unitarias | 2016-05-27 17:30 A | 2016-05-27 18:30 A | 0% → 100% | 57.69d → none |  | resources Tester → Francisco Bautista (Tester); Estefani Garduño Alvarado(Administrador de proyecto) |
| 140 | **Módulos de profesores** | 2016-05-27 18:30 A | 2016-05-28 09:30 A | 0% → 100% | 57.69d → none |  |  |
| 141 | Pruebas unitarias | 2016-05-27 18:30 A | 2016-05-28 09:30 A | 0% → 100% | 57.69d → none |  | resources Tester → Francisco Bautista (Tester); Estefani Garduño Alvarado(Administrador de proyecto) |

| ID | Task | Start | Finish | Duration | Complete | Total float | Other |
| --- | --- | --- | --- | --- | --- | --- | --- |
| 142 | **Módulos de horarios** | 2016-05-28 09:30 A | 2016-05-28 10:30 A |  | 0% → 100% | 57.69d → none |  |
| 143 | Pruebas unitarias | 2016-05-28 09:30 A | 2016-05-28 10:30 A |  | 0% → 100% | 57.69d → none | resources Tester → Francisco Bautista (Tester); Estefani Garduño Alvarado(Administrador de proyecto) |
| 144 | entregar el sistema con pruevas realizadas y con posibles errores corregidos | 2016-05-03 18:00 → 2016-05-04 18:00 (+1d) | 2016-05-03 18:00 → 2016-05-04 18:00 (+1d) |  |  | 79.12d → 78.12d |  |
| 145 | **Implementación** | 2016-05-28 10:30 A | 2016-05-30 12:30 → 2016-05-31 10:30 (+1d) | 0.75d → 1.5d | 0% → 33% | 57.69d → 0d |  |
| 146 | Evaluación del hosting | 2016-05-28 10:30 A | 2016-05-28 11:30 → 2016-05-28 12:30 A |  | 0% → 100% | 57.69d → none | resources Programador; Administrador de proyecto → Francisco Bautista (Programador); Estefani Garduño Alvarado(Administrador de proyecto) |
| 147 | Implementar el sitio al hosting | 2016-05-28 11:30 → 2016-05-28 12:30 A | 2016-05-28 12:30 → 2016-05-30 10:30 A (+2d) |  | 0% → 100% | 57.69d → none | resources Programador → Francisco Bautista (Programador); Estefani Garduño Alvarado(Administrador de proyecto) |
| 148 | Manual de usuario | 2016-05-28 12:30 → 2016-05-30 10:30 A (+2d) | 2016-05-30 09:30 → 2016-05-30 12:30 A |  | 0% → 100% | 57.69d → none | resources Programador → Francisco Bautista (Programador); Estefani Garduño Alvarado(Administrador de proyecto) |
| 149 | Capacitación | 2016-05-30 09:30 → 2016-05-30 12:30 | 2016-05-30 10:30 → 2016-05-30 16:30 | 1h → 2h |  | 57.69d → 0d | resources Programador → Francisco Bautista (Programador); Estefani Garduño Alvarado(Administrador de proyecto) |
| 150 | **Realizar pruebas de caja blanca** | 2016-05-30 10:30 → 2016-05-30 16:30 | 2016-05-30 12:30 → 2016-05-31 10:30 (+1d) | 0.25d → 0.5d |  | 57.69d → 0d |  |
| 151 | Pruebas de rendimiento | 2016-05-30 10:30 → 2016-05-30 16:30 | 2016-05-30 11:30 → 2016-05-30 18:30 | 1h → 2h |  | 57.69d → 0d | resources Tester → Francisco Bautista (Tester); Estefani Garduño Alvarado(Administrador de proyecto) |
| 152 | Pruebas de sistema | 2016-05-30 11:30 → 2016-05-30 18:30 | 2016-05-30 12:30 → 2016-05-31 10:30 (+1d) | 1h → 2h |  | 57.69d → 0d | resources Tester → Francisco Bautista (Tester); Estefani Garduño Alvarado(Administrador de proyecto) |
| 153 | elegir el hosting en base a preci, espacio y seguridad, subir el sitio a dicho hosting, el manual de usuario contendra una explicacion de como utilizar la aplicación | 2016-05-30 12:30 → 2016-05-31 10:30 (+1d) | 2016-05-30 12:30 → 2016-05-31 10:30 (+1d) |  |  | 58.56d → 0d |  |
| 154 | **Cierre de proyecto** | 2016-05-30 12:30 → 2016-05-31 10:30 (+1d) | 2016-05-31 11:30 → 2016-06-01 09:30 (+1d) |  |  | 57.69d → 0d |  |
| 155 | Carta de aceptación | 2016-05-30 12:30 → 2016-05-31 10:30 (+1d) | 2016-05-30 15:30 → 2016-05-31 11:30 (+1d) |  |  | 57.69d → 0d | resources Cliente; Administrador de proyecto → Cliente; Estefani Garduño Alvarado(Administrador de proyecto) |
| 156 | Acta de cierre de proyecto | 2016-05-30 15:30 → 2016-05-31 11:30 (+1d) | 2016-05-30 16:30 → 2016-05-31 12:30 (+1d) |  |  | 57.69d → 0d | resources Administrador de proyecto → Estefani Garduño Alvarado(Administrador de proyecto) |
| 157 | Evaluación de desempeño | 2016-05-30 16:30 → 2016-05-31 12:30 (+1d) | 2016-05-30 17:30 → 2016-05-31 15:30 (+1d) |  |  | 57.69d → 0d | resources Administrador de proyecto → Estefani Garduño Alvarado(Administrador de proyecto) |
| 158 | Junta de lecciones aprendidas | 2016-05-30 17:30 → 2016-05-31 15:30 (+1d) | 2016-05-30 18:30 → 2016-05-31 16:30 (+1d) |  |  | 57.69d → 0d | resources Administrador de proyecto → Estefani Garduño Alvarado(Administrador de proyecto) |
| 159 | Revisión de adherencias de procesos | 2016-05-30 18:30 → 2016-05-31 16:30 (+1d) | 2016-05-31 09:30 → 2016-05-31 17:30 |  |  | 57.69d → 0d | resources Administrador de proyecto; Asegurador de la calidad → Estefani Garduño Alvarado(Administrador de proyecto); Alexis Ramos Caballero (Asegurador de la calidad) |
| 160 | Liberación de los recursos | 2016-05-31 09:30 → 2016-05-31 17:30 | 2016-05-31 10:30 → 2016-05-31 18:30 |  |  | 57.69d → 0d | resources Administrador de proyecto → Estefani Garduño Alvarado(Administrador de proyecto) |
| 161 | Informe final(cierre) | 2016-05-31 10:30 → 2016-05-31 18:30 | 2016-05-31 11:30 → 2016-06-01 09:30 (+1d) |  |  | 57.69d → 0d | resources Administrador de proyecto; Cliente → Estefani Garduño Alvarado(Administrador de proyecto); Cliente |
| 162 | carta de aceptación debe ser firmada por el cliente asi como la liberación de recursos | 2016-05-31 11:30 → 2016-06-01 09:30 (+1d) | 2016-05-31 11:30 → 2016-06-01 09:30 (+1d) |  |  | 57.69d → 0d |  |
| 165 | **Revisión** | 2016-05-06 09:00 A |  |  |  |  |  |
| 166 | Revisión 1 | 2016-05-06 09:00 A | 2016-05-06 09:00 A |  | 0% → 100% |  | resources Administrador de proyecto; Asegurador de la calidad → Estefani Garduño Alvarado(Administrador de proyecto); Alexis Ramos Caballero (Asegurador de la calidad) |
| 167 | Revisión 2 | 2016-05-13 09:00 A | 2016-05-13 09:00 A |  | 0% → 100% |  | resources Administrador de proyecto; Asegurador de la calidad → Estefani Garduño Alvarado(Administrador de proyecto); Alexis Ramos Caballero (Asegurador de la calidad) |
| 168 | Revisión 3 | 2016-05-20 09:00 A | 2016-05-20 09:00 A |  | 0% → 100% |  | resources Administrador de proyecto; Asegurador de la calidad → Estefani Garduño Alvarado(Administrador de proyecto); Alexis Ramos Caballero (Asegurador de la calidad) |
| 169 | Revisión 4 | 2016-05-27 09:00 A | 2016-05-27 09:00 A |  | 0% → 100% |  | resources Administrador de proyecto; Asegurador de la calidad → Estefani Garduño Alvarado(Administrador de proyecto); Alexis Ramos Caballero (Asegurador de la calidad) |
| 170 | Revisión 5 | 2016-06-03 09:00 → 2016-07-02 09:00 A (+29d) | 2016-06-03 09:00 → 2016-07-02 09:00 A (+29d) |  | 0% → 100% |  | constraint start no earlier than 2016-06-03 09:00 → start no earlier than 2016-07-02 09:00; resources Administrador de proyecto; Asegurador de la calidad → Estefani Garduño Alvarado(Administrador de proyecto); Alexis Ramos Caballero (Asegurador de la calidad) |
| 171 | Revisión 6 | 2016-06-10 09:00 A | 2016-06-10 09:00 A |  | 0% → 100% |  | resources Administrador de proyecto; Asegurador de la calidad → Estefani Garduño Alvarado(Administrador de proyecto); Alexis Ramos Caballero (Asegurador de la calidad) |
| 172 | Revisión 7 | 2016-06-17 09:00 A | 2016-06-17 09:00 A |  | 0% → 100% |  | resources Administrador de proyecto; Asegurador de la calidad → Estefani Garduño Alvarado(Administrador de proyecto); Alexis Ramos Caballero (Asegurador de la calidad) |
| 173 | Revisión 8 | 2016-06-24 09:00 A | 2016-06-24 09:00 A |  | 0% → 100% |  | resources Administrador de proyecto; Asegurador de la calidad → Estefani Garduño Alvarado(Administrador de proyecto); Alexis Ramos Caballero (Asegurador de la calidad) |
| 174 | Revisión 9 | 2016-07-01 09:00 A | 2016-07-01 09:00 A |  | 0% → 100% |  | resources Administrador de proyecto; Asegurador de la calidad → Estefani Garduño Alvarado(Administrador de proyecto); Alexis Ramos Caballero (Asegurador de la calidad) |
| 175 | Revisión 10 |  |  |  |  |  | resources Administrador de proyecto; Asegurador de la calidad → Estefani Garduño Alvarado(Administrador de proyecto); Alexis Ramos Caballero (Asegurador de la calidad) |
| 176 | Revisión 11 |  |  |  |  |  | resources Administrador de proyecto; Asegurador de la calidad → Estefani Garduño Alvarado(Administrador de proyecto); Alexis Ramos Caballero (Asegurador de la calidad) |
| 177 | Revisión 12 |  |  |  |  |  | resources Administrador de proyecto; Asegurador de la calidad → Estefani Garduño Alvarado(Administrador de proyecto); Alexis Ramos Caballero (Asegurador de la calidad) |
| 178 | Revisión 13 |  |  |  |  |  | resources Administrador de proyecto; Asegurador de la calidad → Estefani Garduño Alvarado(Administrador de proyecto); Alexis Ramos Caballero (Asegurador de la calidad) |
| 179 | Revisión 14 |  |  |  |  |  | resources Administrador de proyecto; Asegurador de la calidad → Estefani Garduño Alvarado(Administrador de proyecto); Alexis Ramos Caballero (Asegurador de la calidad) |
| 180 | Revisión 15 |  |  |  |  |  | resources Administrador de proyecto; Asegurador de la calidad → Estefani Garduño Alvarado(Administrador de proyecto); Alexis Ramos Caballero (Asegurador de la calidad) |
